# PLT_UVM_Encuestas_V1.0

Schedule from MS Project, 2017-06-05 to 2017-07-31, costs in $.

## Calendars

- Estándar: Mon-Fri 09:00-13:00, 15:00-19:00; Sat-Sun off.

## Resources

| Resource | Group |
| --- | --- |
| Project Manager | ADM |
| Desarrollador Sr | DEV |
| Desarrollador Jr | DEV |
| Tester | ADM |
| Analista |  |

## Schedule

| ID | WBS | Task | Type | Duration | Start | Finish | Predecessors | Total slack | Resources | Work | Cost |
| --- | --- | --- | --- | --- | --- | --- | --- | --- | --- | --- | --- |
| 1 | 1 | **Sistema de Encuestas** |  | 41d | 2017-06-05 | 2017-07-31 |  | 0d |  | 888h | 77,097.36 |
| 2 | 1.1 | **Análisis** |  | 6d | 2017-06-05 | 2017-06-12 |  | 0d |  | 112h | 8,870.96 |
| 3 | 1.1.1 | Requerimientos funcionales |  | 1d | 2017-06-05 | 2017-06-05 |  | 0d | Analista; Project Manager | 16h | 1,290.32 |
| 4 | 1.1.2 | Propuesta de solución |  | 1d | 2017-06-06 | 2017-06-06 | 3 | 0d | Analista; Project Manager | 16h | 1,290.32 |
| 5 | 1.1.3 | Diseño de aplicación web |  | 1d | 2017-06-07 | 2017-06-07 | 4 | 0d | Analista; Project Manager; Desarrollador Jr | 24h | 1,774.16 |
| 6 | 1.1.4 | Diseño de aplicación móvil |  | 1d | 2017-06-08 | 2017-06-08 | 5 | 0d | Analista; Project Manager; Desarrollador Sr | 24h | 1,935.52 |
| 7 | 1.1.5 | Diseño de modelo de datos |  | 1d | 2017-06-09 | 2017-06-09 | 6 | 0d | Analista; Project Manager | 16h | 1,290.32 |
| 8 | 1.1.6 | Prototipado |  | 1d | 2017-06-12 | 2017-06-12 | 7 | 0d | Analista; Project Manager | 16h | 1,290.32 |
| 9 | 1.2 | **Desarrollo** |  | 20d | 2017-06-13 | 2017-07-10 | 2 | 0d |  | 480h | 41,936 |
| 10 | 1.2.1 | **Aplicación web** |  | 20d | 2017-06-13 | 2017-07-10 |  | 0d |  | 160h | 9,676.8 |
| 11 | 1.2.1.1 | BackEnd |  | 2w | 2017-06-13 | 2017-06-26 |  | 0d | Desarrollador Jr | 80h | 4,838.4 |
| 12 | 1.2.1.2 | FrontEnd |  | 2w | 2017-06-27 | 2017-07-10 | 11 | 0d | Desarrollador Jr | 80h | 4,838.4 |
| 13 | 1.2.2 | Aplicación móvil |  | 4w | 2017-06-13 | 2017-07-10 |  | 0d | Desarrollador Sr; Project Manager | 320h | 32,259.2 |
| 14 | 1.3 | **Test** |  | 10d | 2017-07-11 | 2017-07-24 | 9 | 0d |  | 176h | 15,806.4 |
| 15 | 1.3.1 | Pruebas unitarias |  | 3d | 2017-07-11 | 2017-07-13 |  | 0d | Tester; Project Manager | 48h | 4,354.8 |
| 16 | 1.3.2 | Pruebas integrales |  | 5d | 2017-07-14 | 2017-07-20 | 15 | 0d | Tester; Project Manager | 80h | 7,258 |
| 17 | 1.3.3 | Pruebas de aceptación |  | 2d | 2017-07-21 | 2017-07-24 | 16 | 0d | Desarrollador Jr; Desarrollador Sr; Project Manager | 48h | 4,193.6 |
| 18 | 1.4 | Implementación |  | 5d | 2017-07-25 | 2017-07-31 | 14 | 0d | Desarrollador Jr; Desarrollador Sr; Project Manager | 120h | 10,484 |
| 19 | 1.5 | Entrega | milestone | 0d | 2017-07-31 | 2017-07-31 | 18 | 0d | Project Manager |  |  |
